# Proyecto Graduación

Schedule from MS Project, 2018-07-23 to 2018-11-09, status date 2018-06-20, costs in ₡.
Microsoft

## Calendars

- Estándar: Mon-Fri 09:00-13:00, 15:00-19:00; Sat-Sun off.

## Resources

| Resource | Rate |
| --- | --- |
| SM | 1250 |
| Compra |  |

## Schedule

| ID | WBS | Task | Duration | Start | Finish | Predecessors | Baseline start | Baseline finish | Baseline duration | Total slack | Free slack | Constraint | Resources | Work | Cost | Baseline cost |
| --- | --- | --- | --- | --- | --- | --- | --- | --- | --- | --- | --- | --- | --- | --- | --- | --- |
| 1 | 1 | Síntesis de requerimientos | 1d | 2018-07-23 | 2018-07-23 |  | 2018-07-23 | 2018-07-23 | 0.5d | 0d |  | must start on 2018-07-23 | SM | 8h | 10,000 | 5,000 |
| 2 | 2 | **Objetivo 1** | 42.25d | 2018-07-24 | 2018-09-20 |  | 2018-07-23 | 2018-09-05 | 32.5d | 0d |  |  | SM | 924h | 742,500 | 245,000 |
| 3 | 2.1 | Lluvia de ideas sobre el diseño | 1d | 2018-07-24 | 2018-07-24 | 1 | 2018-07-23 | 2018-07-23 | 0.5d | 0d |  | must start on 2018-07-24 | SM | 8h | 10,000 | 5,000 |
| 4 | 2.2 | Obtener una lista de especificaciones | 1d | 2018-07-25 | 2018-07-25 | 3 |  |  |  | 0d |  | must start on 2018-07-25 | SM | 8h | 10,000 |  |
| 5 | 2.3 | Efectuar las pruebas de concepto | 5d | 2018-07-26 | 2018-08-01 | 4 | 2018-07-24 | 2018-07-30 | 4.5d | 2d | 0d | start no earlier than 2018-07-26 | SM | 40h | 50,000 | 45,000 |
| 6 | 2.4 | Comprar los componentes | 330h | 2018-08-06 | 2018-08-20 | 5 | 2018-08-06 | 2018-08-20 | 336h | 0d |  | must start on 2018-08-06 | Compra | 330h |  |  |
| 7 | 2.5 | Elaborar el diseño de las esclusas | 7d | 2018-08-02 | 2018-08-10 | 5 | 2018-07-31 | 2018-08-08 | 7d | 41.75d | 19d |  | SM | 56h | 70,000 | 70,000 |
| 8 | 2.6 | Manufacturar el diseño | 9d | 2018-08-27 | 2018-09-06 | 6 | 2018-08-21 | 2018-08-30 | 8d | 22.75d | 0d | start no earlier than 2018-08-27 | SM | 72h | 90,000 | 80,000 |
| 9 | 2.7 | Generar el código para la comunicación | 9d | 2018-09-07 | 2018-09-20 | 8, 7 | 2018-08-31 | 2018-09-05 | 4d | 22.75d |  | start no earlier than 2018-08-23 | SM | 72h | 90,000 | 40,000 |
| 10 | 3 | **Objetivo 2** | 34d | 2018-08-13 | 2018-09-27 |  | 2018-08-09 | 2018-09-17 | 28d? | 4d |  |  |  | 464h | 160,000 | 180,000 |
| 11 | 3.1 | Generar el diseño de las tolvas | 9d | 2018-08-13 | 2018-08-23 | 3 | 2018-08-09 | 2018-08-17 | 7d | 28d | 11d | start no earlier than 2018-08-13 | SM | 72h | 90,000 | 70,000 |
| 12 | 3.2 | Comprar los componentes | 336h | 2018-08-17 | 2018-08-31 |  | 2018-08-17 | 2018-08-31 | 336h | 0d |  | must start on 2018-08-17 | Compra | 336h |  |  |
| 13 | 3.3 | Manufaturar el diseño de las tolvas y otros | 6d | 2018-09-10 | 2018-09-17 | 12, 11 | 2018-09-03 | 2018-09-06 | 4d | 17d | 0d | start no earlier than 2018-09-08 | SM | 48h | 60,000 | 40,000 |
| 14 | 3.4 | Verificar el funcionamiento de todos los componentes | 1d | 2018-09-18 | 2018-09-18 | 13 | 2018-09-07 | 2018-09-07 | 1d? | 17d | 0d |  | SM | 8h | 10,000 | 10,000 |
| 15 | 3.5 | Ensamblar las componentes | 5d | 2018-09-19 | 2018-09-25 | 14, 12 | 2018-09-10 | 2018-09-13 | 4d | 17d | 0d | start no earlier than 2018-09-10 |  |  |  | 40,000 |
| 16 | 3.6 | Verificar el funcionamiento del subsistema | 2d | 2018-09-26 | 2018-09-27 | 15 | 2018-09-14 | 2018-09-17 | 2d | 17d |  | start no earlier than 2018-09-14 |  |  |  | 20,000 |
| 17 | 4 | **Objetivo 3** | 47d | 2018-08-17 | 2018-10-22 |  | 2018-08-17 | 2018-10-11 | 40d | 0d |  |  |  | 336h |  | 170,000 |
| 18 | 4.1 | Comprar los componentes | 80h | 2018-08-17 | 2018-08-31 |  | 2018-08-17 | 2018-08-31 | 336h | 0d |  | must start on 2018-08-17 | Compra | 336h |  |  |
| 19 | 4.2 | Programar el funcionamiento de la botonera | 2d | 2018-09-28 | 2018-10-01 | 18 | 2018-09-18 | 2018-09-19 | 2d | 0d |  | start no earlier than 2018-09-28 |  |  |  | 20,000 |
| 20 | 4.3 | Obtener el modelo del transporte de masas. | 1d | 2018-10-02 | 2018-10-02 | 19 | 2018-09-20 | 2018-09-20 | 1d | 0d |  |  |  |  |  | 10,000 |
| 21 | 4.4 | Diseñar el controlador | 1d | 2018-10-03 | 2018-10-03 | 20 | 2018-09-21 | 2018-09-21 | 1d | 0d |  |  |  |  |  | 10,000 |
| 22 | 4.5 | Programar la interfaz sobre la pantalla LCD | 2d | 2018-10-04 | 2018-10-05 | 21 | 2018-09-24 | 2018-09-25 | 2d | 0d |  |  |  |  |  | 20,000 |
| 23 | 4.6 | Implementar el conrolador en la Raspberry | 3d | 2018-10-08 | 2018-10-10 | 22 | 2018-09-26 | 2018-09-28 | 3d | 0d |  |  |  |  |  | 30,000 |
| 24 | 4.7 | Construir los circuitos impresos para los componentes | 4d | 2018-10-11 | 2018-10-16 | 23 | 2018-10-01 | 2018-10-04 | 4d | 0d |  | start no earlier than 2018-09-30 |  |  |  | 40,000 |
| 25 | 4.8 | Construir la caja de protección | 4d | 2018-10-17 | 2018-10-22 | 24 | 2018-10-08 | 2018-10-11 | 4d | 0d |  |  |  |  |  | 40,000 |

| ID | WBS | Task | Type | Duration | Start | Finish | Predecessors | Baseline start | Baseline finish | Baseline duration | Total slack | Constraint | Baseline cost |
| --- | --- | --- | --- | --- | --- | --- | --- | --- | --- | --- | --- | --- | --- |
| 26 | 5 | **Objetivo 4** |  | 80d | 2018-07-23 | 2018-11-09 |  | 2018-10-12 | 2018-11-08 | 20d | 0d |  | 200,000 |
| 27 | 5.1 | Validar el funcionamiento de cada uno de los subsistemas |  | 3d | 2018-10-23 | 2018-10-25 | 9, 16, 25 | 2018-10-12 | 2018-10-16 | 3d | 0d |  | 30,000 |
| 28 | 5.2 | Diseñar el experimento estadístico |  | 4d | 2018-10-26 | 2018-10-31 | 27 | 2018-10-17 | 2018-10-19 | 3d | 0d |  | 30,000 |
| 29 | 5.3 | Ejecutar el experimento diseñado |  | 3d | 2018-11-01 | 2018-11-05 | 28 | 2018-10-22 | 2018-10-24 | 3d | 0d |  | 30,000 |
| 30 | 5.4 | Analizar los datos obtenidos |  | 4d | 2018-11-06 | 2018-11-09 | 29 | 2018-10-25 | 2018-10-30 | 4d | 0d |  | 40,000 |
| 31 | 5.5 | Elaboración del informe final | manual | 80d | 2018-07-23 | 2018-11-09 |  |  |  |  |  | start no earlier than 2018-07-22 |  |
